# Schedule

Schedule from MS Project, 2012-12-06 to 2013-04-15.

## Calendars

- Standard: Mon-Fri 20:00-23:59; Sat-Sun 18:00-23:59. Exceptions (off unless hours are given): 2012-12-29 to 2013-01-02 (Nghỉ tết Dương Lịch), 2013-02-08 to 2013-02-17 (Nghỉ tết Âm lịch 2013).

## Resources

| Resource | Group |
| --- | --- |
| Khánh | Leader |
| Thịnh | Member/Tester |
| Vượng | Member/Developer |
| Anh | Member/Tester |

## Schedule

| ID | WBS | Task | Type | Duration | Start | Finish | Resources | Work |
| --- | --- | --- | --- | --- | --- | --- | --- | --- |
| 1 | 1 | **Initiating** |  | 1d | 2013-01-03 08:00 | 2013-01-03 16:00 |  | 9h |
| 2 | 1.1 | Hold kick off meeting | manual | 1.12d | 2013-01-03 08:00 | 2013-01-03 17:00 | Khánh | 9h |
| 3 | 2 | **Planning** |  | 5.62d | 2013-01-04 08:00 | 2013-01-07 17:00 |  |  |
| 4 | 2.1 | Prepare project introduction | manual | 1d | 2013-01-04 08:00 | 2013-01-04 16:00 |  |  |
| 5 | 2.2 | <New Task> | manual | 0.5d? | 2013-01-04 08:00 | 2013-01-04 11:59 |  |  |
| 6 | 2.3 | <New Task> | manual | 0.5d? | 2013-01-04 08:00 | 2013-01-04 11:59 |  |  |
| 7 | 3 | Executing | manual | 68.89d | 2012-12-06 08:00 | 2013-04-15 17:00 |  |  |
